# Кион Метрика

Schedule from MS Project, 2024-01-01 to 2024-11-28, A marks actual dates.

## Calendars

- Стандартный: Mon-Fri 09:00-13:00, 14:00-18:00; Sat-Sun off. Exceptions (off unless hours are given): 2024-02-23 (День Российской Армии), 2024-03-08 (Международный Женский День), 2024-04-29 to 2024-05-01 (Первомай), 2024-05-09 to 2024-05-10 (День Победы), 2024-06-12 (День России), 2024-11-04 (День Народного Единства).

## Schedule

| ID | WBS | Task | Type | Duration | Start | Finish | Predecessors | Complete | Remaining | Total slack | Free slack | Constraint |
| --- | --- | --- | --- | --- | --- | --- | --- | --- | --- | --- | --- | --- |
| 1 | 1 | Сдвиг из-за проблемы старых клиентов в продуктовых дэшах |  | 60d? | 2024-07-15 A | 2024-10-04 |  | 77% | 14d? | 0d |  | start no earlier than 2024-07-15 |
| 2 | 2 | **Android** |  | 197d | 2024-01-01 A | 2024-10-11 |  | 96% | 8.01d | 33d |  |  |
| 3 | 2.1 | Разработка SDK |  | 14d | 2024-01-01 A | 2024-01-18 A |  | 100% |  |  |  |  |
| 4 | 2.2 | Выпуск релиза, выкатка в прод |  | 15d | 2024-01-19 A | 2024-02-08 A | 3 | 100% |  |  |  |  |
| 5 | 2.3 | Сдвиг из-за проблем сходимости |  | 29d | 2024-02-09 A | 2024-03-22 A | 4 | 100% |  |  |  |  |
| 6 | 2.4 | **Тестирование сходимости** |  | 45d | 2024-03-25 A | 2024-05-31 A | 5 | 100% |  |  |  |  |
| 7 | 2.4.1 | Проверка устранения проблемы локально |  | 5d | 2024-03-25 A | 2024-03-29 A |  | 100% |  |  |  |  |
| 8 | 2.4.2 | Раскатка сборки в проде |  | 8d | 2024-04-01 A | 2024-04-10 A | 7 | 100% |  |  |  |  |
| 9 | 2.4.3 | Проверка устранения проблемы на больших объёмах |  | 2d | 2024-04-11 A | 2024-04-12 A | 8 | 100% |  |  |  |  |
| 10 | 2.4.4 | Добавление новых полей (ANDROIDAPP-4708) |  | 10d | 2024-03-25 A | 2024-04-05 A | 5 | 100% |  |  |  |  |
| 11 | 2.4.5 | Сдвиг раскатки 104 релиза |  | 5d | 2024-04-08 A | 2024-04-12 A | 10 | 100% |  |  |  |  |
| 12 | 2.4.6 | Раскатка новых полей (105 релиз) |  | 10d | 2024-04-15 A | 2024-04-26 A | 11 | 100% |  |  |  |  |
| 13 | 2.4.7 | Тестирование сходимости с новыми полями |  | 2d | 2024-05-02 A | 2024-05-03 A | 12 | 100% |  |  |  |  |
| 14 | 2.4.8 | Увеличение буфера по итогам тестирования сходимости |  | 8d | 2024-05-06 A | 2024-05-17 A | 13 | 100% |  |  |  |  |
| 15 | 2.4.9 | Раскатка релиза 107 |  | 2d | 2024-05-20 A | 2024-05-21 A | 14 | 100% |  |  |  |  |
| 16 | 2.4.10 | Тестирование сходимости в релизе 107 |  | 8d | 2024-05-22 A | 2024-05-31 A | 15 | 100% |  |  |  |  |
| 17 | 2.5 | Переключение продуктовых дэшей Android |  | 5d | 2024-10-07 | 2024-10-11 | 1 |  |  | 33d | 0d |  |
| 18 | 2.6 | SDK Android переключен на Кион.Метрику Android | milestone | 0d | 2024-10-11 | 2024-10-11 | 17, 1 |  |  | 33d |  |  |
| 19 | 3 | **AndroidTV** |  | 139d | 2024-03-25 A | 2024-10-11 |  | 96% | 5.65d | 33d |  |  |
| 20 | 3.1 | Увеличение раскатки текущей версии SDK на APP |  | 8d | 2024-03-25 A | 2024-04-03 A | 7SS | 100% |  |  |  |  |
| 21 | 3.2 | Оценка нагрузки на бэк |  | 10d | 2024-03-25 A | 2024-04-05 A | 7SS | 100% |  |  |  |  |
| 22 | 3.3 | Раскатка на лончерах (сегмент IPTV) |  | 12d | 2024-04-08 A | 2024-04-23 A | 21 | 100% |  |  |  |  |
| 23 | 3.4 | Интеграция финальной версии SDK | inactive | 10d | 2024-06-03 | 2024-06-17 | 6, 13 |  |  | 102d | 0d |  |
| 24 | 3.5 | Выпуск релиза, выкатка в прод | inactive | 15d | 2024-06-18 | 2024-07-08 | 23 |  |  | 102d |  |  |
| 25 | 3.6 | Тестирование сходимости |  | 10d | 2024-06-03 A | 2024-06-17 A | 16 | 100% |  |  |  |  |
| 26 | 3.7 | Устранение замечаний по сходимости ATV |  | 13d | 2024-06-18 A | 2024-07-04 A | 25 | 100% |  |  |  |  |

| ID | WBS | Task | Type | Duration | Start | Finish | Predecessors | Complete | Remaining | Total slack | Free slack | Constraint |
| --- | --- | --- | --- | --- | --- | --- | --- | --- | --- | --- | --- | --- |
| 27 | 3.8 | **Фикс лончеров (dt)** |  | 20d | 2024-07-12 A | 2024-08-08 A |  | 100% |  |  |  |  |
| 28 | 3.8.1 | Разработка фикса dt |  | 10d | 2024-07-12 A | 2024-07-25 A |  | 100% |  |  |  | start no earlier than 2024-07-12 |
| 29 | 3.8.2 | Раскатка фикса dt |  | 10d | 2024-07-26 A | 2024-08-08 A | 28 | 100% |  |  |  |  |
| 30 | 3.9 | **Фикс ТВАПП** |  | 26d | 2024-07-05 A | 2024-08-09 A | 26 | 100% |  |  |  |  |
| 31 | 3.9.1 | Раскатка увеличения буфера |  | 10d | 2024-07-05 A | 2024-07-18 A |  | 100% |  |  |  |  |
| 32 | 3.9.2 | Проверка сходимости | inactive | 5d | 2024-07-19 | 2024-07-25 | 31 |  |  | 89d |  |  |
| 33 | 3.9.3 | Включение fallback на КМ |  | 10d | 2024-07-15 A | 2024-07-26 A |  | 100% |  |  |  | start no earlier than 2024-07-15 |
| 34 | 3.9.4 | Раскатка fallback на КМ |  | 10d | 2024-07-29 A | 2024-08-09 A | 33 | 100% |  |  |  |  |
| 35 | 3.10 | Проверка сходимости AndroidTV |  | 15d | 2024-08-12 A | 2024-08-30 A | 30 | 100% |  |  |  |  |
| 36 | 3.11 | Переключение продуктовых дэшей AndroidTV |  | 5d | 2024-10-07 | 2024-10-11 | 30, 35, 1 |  |  | 33d | 0d |  |
| 37 | 3.12 | SDK Android TV переключен на Кион.Метрику | milestone | 0d | 2024-10-11 | 2024-10-11 | 35, 36 |  |  | 33d |  |  |
| 38 | 4 | **iOS** |  | 197d? | 2024-01-01 A | 2024-10-11 |  | 95% | 10.62d? | 33d |  |  |
| 39 | 4.1 | Разработка SDK |  | 29d | 2024-01-01 A | 2024-02-08 A |  | 100% |  |  |  |  |
| 40 | 4.2 | Выпуск релиза, выкатка в прод |  | 19d | 2024-02-09 A | 2024-03-07 A | 39 | 100% |  |  |  |  |
| 41 | 4.3 | **Тестирование сходимости** |  | 65d? | 2024-03-11 A | 2024-06-17 |  | 94% | 4d? | 117d |  |  |
| 42 | 4.3.1 | Тестирование сходимости iOS Итерация 1 |  | 10d? | 2024-03-11 A | 2024-03-22 A | 40 | 100% |  |  |  |  |
| 43 | 4.3.2 | Сдвиг из-за ожидания разработчика |  | 15d | 2024-03-25 A | 2024-04-12 A | 42 | 100% |  |  |  |  |
| 44 | 4.3.3 | Исправление замечаний по итогам проверки сходимости |  | 10d? | 2024-04-15 A | 2024-04-26 A | 43 | 100% |  |  |  |  |
| 45 | 4.3.4 | Выпуск релиза, выкатка в прод |  | 6d | 2024-05-02 A | 2024-05-13 A | 44 | 100% |  |  |  |  |
| 46 | 4.3.5 | Тестирование сходимости Итерация 2 |  | 5d | 2024-05-14 A | 2024-05-20 A | 45 | 100% |  |  |  |  |
| 47 | 4.3.6 | Исправление замечаний по итогам Итерации 2, раскатка версии 4.16 |  | 14d | 2024-05-21 A | 2024-06-07 A | 46 | 100% |  |  |  |  |
| 48 | 4.3.7 | Тестирование сходимости Итерация 3 |  | 5d | 2024-06-10 A | 2024-06-17 | 47 | 20% | 4d | 117d |  |  |
| 49 | 4.4 | Устранение замечаний по сходимости iOS |  | 14d | 2024-06-18 A | 2024-07-05 A | 48 | 100% |  |  |  |  |
| 50 | 4.5 | Сдвиг раскатки релизов |  | 20d | 2024-07-08 A | 2024-08-02 A | 49 | 100% |  |  |  |  |
| 51 | 4.6 | Раскатка фикса сходимости iOS |  | 5d | 2024-08-05 A | 2024-08-09 A | 50 | 100% |  |  |  |  |
| 52 | 4.7 | Сдвиг проверки сходимости |  | 5d | 2024-08-12 A | 2024-08-16 A | 51 | 100% |  |  |  |  |
| 53 | 4.8 | Тестирование сходимости итерация 4 |  | 5d | 2024-08-19 A | 2024-08-23 A | 52 | 100% |  |  |  |  |
| 54 | 4.9 | Переключение продуктовых дэшей iOS |  | 5d | 2024-10-07 | 2024-10-11 | 53, 1 |  |  | 0d |  |  |
| 55 | 4.10 | SDK iOS переключен на Кион.Метрику | milestone | 0d | 2024-10-11 | 2024-10-11 | 46, 54, 1 |  |  | 33d |  |  |

Notes:
- 32: Решение не помогло
- 33: По умолчанию на клиентах включается использование КМ, пока из waterbase не придёт обратное

| ID | WBS | Task | Type | Duration | Start | Finish | Predecessors | Complete | Remaining | Total slack | Free slack | Constraint | JIRA |
| --- | --- | --- | --- | --- | --- | --- | --- | --- | --- | --- | --- | --- | --- |
| 56 | 5 | **TVOS** |  | 33d? | 2024-10-14 | 2024-11-28 |  |  |  | 0d |  |  |  |
| 57 | 5.1 | Интеграция SDK |  | 10d | 2024-10-14 | 2024-10-25 | 54 |  |  | 0d |  |  |  |
| 58 | 5.2 | Выпуск релиза, выкатка в прод |  | 15d? | 2024-10-28 | 2024-11-18 | 57 |  |  | 0d |  |  |  |
| 59 | 5.3 | Тестирование сходимости TVOS |  | 3d? | 2024-11-19 | 2024-11-21 | 58 |  |  | 0d |  |  |  |
| 60 | 5.4 | Тестирование сходимости | inactive | 5d? | 2024-11-19 | 2024-11-25 | 58 |  |  | 3d |  |  |  |
| 61 | 5.5 | Переключение продуктовых дэшей TVOS |  | 5d? | 2024-11-22 | 2024-11-28 | 59 |  |  | 0d |  |  |  |
| 62 | 5.6 | SDK TVOS переключен на Кион.Метрику | milestone | 0d? | 2024-11-28 | 2024-11-28 | 60, 61 |  |  | 0d |  |  |  |
| 63 | 6 | **WEB** |  | 68d | 2024-01-01 A | 2024-04-05 A |  | 100% |  |  |  |  |  |
| 64 | 6.1 | Разработка SDK |  | 10d | 2024-01-01 A | 2024-01-12 A |  | 100% |  |  |  |  |  |
| 65 | 6.2 | Тестирование сходимости WEB |  | 4d | 2024-01-15 A | 2024-01-18 A | 64 | 100% |  |  |  |  |  |
| 66 | 6.3 | SDK WEB переключен на Кион.Метрику | milestone | 0d | 2024-01-18 A | 2024-01-18 A | 65 | 100% |  |  |  |  |  |
| 67 | 6.4 | Реализация SDK SSR (MEDIAWEB-2031) |  | 10d | 2024-03-25 A | 2024-04-05 A |  | 100% |  |  |  | start no earlier than 2024-03-25 |  |
| 68 | 7 | **SmartTV** |  | 216d | 2024-01-19 A | 2024-11-28 |  | 91% | 18.78d | 0d |  |  |  |
| 69 | 7.1 | Разработка SDK |  | 34d | 2024-01-19 A | 2024-03-07 A | 65 | 100% |  |  |  |  |  |
| 70 | 7.2 | Раскатка LG, Samsung |  | 32d | 2024-01-19 A | 2024-03-05 A | 65 | 100% |  |  |  |  |  |
| 71 | 7.3 | **Тестирование сходимости** |  | 45d | 2024-03-11 A | 2024-05-17 A |  | 100% |  |  |  |  |  |
| 72 | 7.3.1 | Тестирование сходимости SmartTV итерация 1 |  | 25d | 2024-03-11 A | 2024-04-12 A | 69 | 100% |  |  |  |  |  |
| 73 | 7.3.2 | Устранение замечаний по тестированию сходимости |  | 10d | 2024-04-15 A | 2024-04-26 A | 72 | 100% |  |  |  |  |  |
| 74 | 7.3.3 | Тестирование сходимости SmartTV итерация 2 |  | 10d | 2024-05-02 A | 2024-05-17 A | 73 | 100% |  |  |  |  |  |
| 75 | 7.3.4 | SmartTV переведены на КионМетрику | milestone | 0d | 2024-05-17 A | 2024-05-17 A | 74 | 100% |  |  |  |  |  |
| 76 | 7.4 | Сдвиг переключения продуктовых дэшей SmartTV |  | 23d | 2024-05-20 A | 2024-06-20 A | 75 | 100% |  |  |  |  |  |
| 77 | 7.5 | Проблема LG |  | 45d | 2024-07-31 A | 2024-10-01 |  | 76% | 11d | 36d | 3d | start no earlier than 2024-07-31 | https://jira.mts.ru/browse/BLNDR-6063 |
| 78 | 7.6 | Переключение продуктовых дэшей SmartTV |  | 5d | 2024-10-07 | 2024-10-11 | 77, 1 |  |  | 33d |  |  |  |
| 79 | 7.7 | Раскатка LG, Samsung | inactive | 32d | 2024-05-02 | 2024-06-19 | 73 |  |  | 115d | 0d |  |  |
| 80 | 7.8 | SDK SmartTV переключен на Кион.Метрику | milestone, inactive | 0d | 2024-06-19 | 2024-06-19 | 79 |  |  | 115d |  |  |  |
| 81 | 7.9 | Все продуктовые дэши переключены на К.Метрику | milestone | 0d | 2024-11-28 | 2024-11-28 | 78, 62, 55, 37 |  |  | 0d |  |  |  |
